Schedule from MS Project, 2020-03-24 to 2020-09-08, costs in ¥.

## Calendars

- 标准: Mon-Fri 08:00-12:00, 13:00-17:00; Sat-Sun off.

## Resources

| Resource |
| --- |
| 项目经理 |
| 产品经理 |
| 开发经理 |
| 开发工程师 |
| 测试人员 |
| 测试工程师 |
| 饶东来 |
| 王天昊 |
| 李春锦 |
| 李传赫 |
| 张航 |
| 刘震宇 |
| 徐靖垚 |
| 任翔渝 |
| 彭威 |
| 狄旭东 |

## Schedule

| ID | WBS | Task | Type | Duration | Start | Finish | Predecessors | Total slack | Free slack | Constraint | Resources | Work | Cost |
| --- | --- | --- | --- | --- | --- | --- | --- | --- | --- | --- | --- | --- | --- |
| 1 | 1 | **里程碑** |  | 121d | 2020-03-24 | 2020-09-08 |  |  |  |  | 饶东来 | 968h | 121,000 |
| 2 | 1.1 | 需求确认 | milestone | 0d | 2020-04-22 | 2020-04-22 | 12 | 0d |  | must finish on 2020-04-22 | 饶东来 |  |  |
| 3 | 1.2 | 设计确认 | milestone | 0d | 2020-05-21 | 2020-05-21 | 39 | 0d |  | must finish on 2020-05-21 | 饶东来 |  |  |
| 4 | 1.3 | 编码实现 | milestone | 0d | 2020-07-10 | 2020-07-10 | 66 | 0d |  | must finish on 2020-07-10 | 饶东来 |  |  |
| 5 | 1.4 | 测试验证 | milestone | 0d | 2020-08-10 | 2020-08-10 | 70, 77 | 0d |  | must finish on 2020-08-10 | 饶东来 |  |  |
| 6 | 1.5 | 发布上线 | milestone | 0d | 2020-09-07 | 2020-09-07 | 83 | 2d |  | start no earlier than 2020-09-07 | 饶东来 |  |  |
| 7 | 2 | **需求阶段** |  | 21d? | 2020-03-24 | 2020-04-21 |  | 1d |  | start no earlier than 2020-03-24 | 王天昊 | 368h | 39,700 |
| 8 | 2.1 | 需求调研 |  | 7d | 2020-03-24 | 2020-04-01 |  | 1d | 0d |  | 王天昊 | 56h | 5,950 |
| 9 | 2.2 | 调研方案整理 |  | 3d | 2020-04-02 | 2020-04-06 | 8 | 1d | 0d |  | 王天昊 | 24h | 2,550 |
| 10 | 2.3 | 调研方案评审 |  | 2d | 2020-04-07 | 2020-04-08 | 9 | 1d | 0d |  | 饶东来; 王天昊 | 32h | 3,700 |
| 11 | 2.4 | 需求方案整理 |  | 7d? | 2020-04-09 | 2020-04-17 | 10 | 1d | 0d |  | 王天昊 | 56h | 5,950 |
| 12 | 2.5 | 需求方案终审 |  | 2d | 2020-04-20 | 2020-04-21 | 11 | 1d |  |  | 饶东来; 王天昊 | 32h | 3,700 |
| 13 | 3 | **设计阶段** |  | 20d? | 2020-04-23 | 2020-05-20 |  | 1d |  |  | 李传赫 | 1032h | 110,400 |
| 14 | 3.1 | **概要设计** |  | 8d? | 2020-04-23 | 2020-05-04 |  | 1d |  |  | 李传赫 | 200h | 21,400 |
| 15 | 3.1.1 | **系统架构设计** |  | 8d? | 2020-04-23 | 2020-05-04 |  | 1d |  |  | 李传赫 | 136h | 14,600 |
| 16 | 3.1.1.1 | 设计准备 |  | 1d | 2020-04-23 | 2020-04-23 | 2 | 1d | 0d |  | 李传赫 | 8h | 850 |
| 17 | 3.1.1.2 | 界定约束条件 | milestone | 0d | 2020-04-23 | 2020-04-23 | 16 | 1d | 0d |  | 李传赫 |  |  |
| 18 | 3.1.1.3 | 确定设计策略 |  | 1d? | 2020-04-24 | 2020-04-24 | 17 | 1d | 0d |  | 李传赫 | 8h | 850 |
| 19 | 3.1.1.4 | 分解设计任务 |  | 4d | 2020-04-27 | 2020-04-30 | 18 | 1d | 0d |  | 李传赫 | 32h | 3,400 |
| 20 | 3.1.1.5 | 需求再确认 | milestone | 0d | 2020-04-30 | 2020-04-30 | 19 | 1d | 0d |  | 李传赫; 饶东来 |  |  |
| 21 | 3.1.1.6 | 编写设计文档 |  | 1d? | 2020-05-01 | 2020-05-01 | 20 | 1d | 0d |  | 李传赫 | 8h | 850 |
| 22 | 3.1.1.7 | 设计评审 |  | 1d? | 2020-05-04 | 2020-05-04 | 21 | 1d | 0d |  | 李传赫; 饶东来 | 16h | 1,850 |
| 23 | 3.2 | **详细设计** |  | 11d? | 2020-05-05 | 2020-05-19 |  | 1d |  |  | 李传赫 | 656h | 70,150 |
| 24 | 3.2.1 | **功能模块设计** |  | 11d? | 2020-05-05 | 2020-05-19 |  | 1d |  |  | 李传赫 | 184h | 19,700 |
| 25 | 3.2.1.1 | 设计准备 |  | 1d? | 2020-05-05 | 2020-05-05 | 22 | 1d | 0d |  | 李传赫 | 8h | 850 |
| 26 | 3.2.1.2 | 模块构建 |  | 8d | 2020-05-06 | 2020-05-15 | 25 | 1d | 0d |  | 李传赫 | 64h | 6,800 |
| 27 | 3.2.1.3 | 文档编写 |  | 1d? | 2020-05-18 | 2020-05-18 | 26 | 1d | 0d |  | 李传赫 | 8h | 850 |
| 28 | 3.2.1.4 | 评审 |  | 1d? | 2020-05-19 | 2020-05-19 | 27 | 1d | 0d |  | 李传赫; 饶东来 | 16h | 1,850 |

| ID | WBS | Task | Duration | Start | Finish | Predecessors | Total slack | Free slack | Resources | Work | Cost |
| --- | --- | --- | --- | --- | --- | --- | --- | --- | --- | --- | --- |
| 29 | 3.2.2 | **数据库设计** | 11d? | 2020-05-05 | 2020-05-19 |  | 1d |  | 李春锦 | 192h | 20,550 |
| 30 | 3.2.2.1 | 设计准备 | 1d? | 2020-05-05 | 2020-05-05 | 22 | 1d | 0d | 李春锦 | 8h | 850 |
| 31 | 3.2.2.2 | 数据库设计 | 8d | 2020-05-06 | 2020-05-15 | 30 | 1d | 0d | 李春锦 | 64h | 6,800 |
| 32 | 3.2.2.3 | 数据库设计文档编写 | 1d? | 2020-05-18 | 2020-05-18 | 31 | 1d | 0d | 李春锦 | 8h | 850 |
| 33 | 3.2.2.4 | 数据库设计评审 | 1d? | 2020-05-19 | 2020-05-19 | 32 | 1d | 0d | 李传赫; 饶东来; 李春锦 | 24h | 2,700 |
| 34 | 3.2.3 | **用户界面设计** | 11d? | 2020-05-05 | 2020-05-19 |  | 1d |  | 李春锦 | 192h | 20,550 |
| 35 | 3.2.3.1 | 设计准备 | 1d? | 2020-05-05 | 2020-05-05 | 22 | 1d | 0d | 李春锦 | 8h | 850 |
| 36 | 3.2.3.2 | 界面设计 | 8d | 2020-05-06 | 2020-05-15 | 35 | 1d | 0d | 李春锦 | 64h | 6,800 |
| 37 | 3.2.3.3 | 界面设计文档编写 | 1d? | 2020-05-18 | 2020-05-18 | 36 | 1d | 0d | 李春锦 | 8h | 850 |
| 38 | 3.2.3.4 | 界面设计评审 | 1d? | 2020-05-19 | 2020-05-19 | 37 | 1d | 0d | 李春锦; 李传赫; 饶东来 | 24h | 2,700 |
| 39 | 3.3 | 设计阶段评审 | 1d? | 2020-05-20 | 2020-05-20 | 28, 33, 38 | 1d |  | 李传赫; 饶东来 | 16h | 1,850 |
| 40 | 4 | **开发阶段** | 36d? | 2020-05-22 | 2020-07-10 | 3 | 0d |  | 刘震宇 | 1224h | 141,475 |
| 41 | 4.1 | **企业功能开发** | 12d? | 2020-05-22 | 2020-06-08 |  | 66d |  | 刘震宇 [25%]; 任翔渝 [25%]; 徐靖垚 [25%]; 张航 [25%] | 208h | 23,975 |
| 42 | 4.1.1 | 备案信息功能实现 | 3d | 2020-05-22 | 2020-05-26 | 3 | 66d | 0d | 刘震宇 [25%]; 任翔渝 [25%]; 徐靖垚 [25%]; 张航 [25%] | 24h | 2,737.5 |
| 43 | 4.1.2 | 数据填报功能实现 | 3d | 2020-05-27 | 2020-05-29 | 42 | 66d | 0d | 刘震宇 [25%]; 任翔渝 [25%]; 徐靖垚 [25%]; 张航 [25%] | 24h | 2,737.5 |
| 44 | 4.1.3 | 数据查询功能实现 | 3d | 2020-06-01 | 2020-06-03 | 43 | 66d | 0d | 刘震宇 [25%]; 任翔渝 [25%]; 徐靖垚 [25%]; 张航 [25%] | 24h | 2,737.5 |
| 45 | 4.1.4 | 企业功能模块文档编写 | 1d? | 2020-06-04 | 2020-06-04 | 44 | 66d | 0d | 刘震宇 [25%]; 任翔渝 [25%]; 徐靖垚 [25%]; 张航 [25%] | 8h | 912.5 |
| 46 | 4.1.5 | 企业功能模块评审 | 2d | 2020-06-05 | 2020-06-08 | 45 | 66d |  | 刘震宇; 饶东来 | 32h | 3,900 |
| 47 | 4.2 | **省功能开发** | 34d? | 2020-05-22 | 2020-07-08 |  | 0d |  | 张航 [25%]; 刘震宇 [25%]; 任翔渝 [25%]; 徐靖垚 [25%] | 648h | 74,000 |
| 48 | 4.2.1 | 企业备案功能实现 | 2d | 2020-05-22 | 2020-05-25 | 3 | 0d |  | 徐靖垚 [25%]; 任翔渝 [25%]; 刘震宇 [25%]; 张航 [25%] | 16h | 1,825 |
| 49 | 4.2.2 | 报表管理功能实现 | 3d | 2020-05-26 | 2020-05-28 | 48 | 0d |  | 徐靖垚 [25%]; 刘震宇 [25%]; 任翔渝 [25%]; 张航 [25%] | 24h | 2,737.5 |
| 50 | 4.2.3 | 数据汇总功能实现 | 2d | 2020-05-29 | 2020-06-01 | 49 | 0d |  | 刘震宇 [25%]; 任翔渝 [25%]; 徐靖垚 [25%]; 张航 [25%] | 16h | 1,825 |
| 51 | 4.2.4 | 数据修改功能实现 | 3d | 2020-06-02 | 2020-06-04 | 50 | 0d |  | 刘震宇 [25%]; 任翔渝 [25%]; 徐靖垚 [25%]; 张航 [25%] | 24h | 2,737.5 |
| 52 | 4.2.5 | 取样分析功能实现 | 2d | 2020-06-05 | 2020-06-08 | 51 | 0d |  | 刘震宇 [25%]; 任翔渝 [25%]; 徐靖垚 [25%]; 张航 [25%] | 16h | 1,825 |

| ID | WBS | Task | Duration | Start | Finish | Predecessors | Total slack | Resources | Work | Cost |
| --- | --- | --- | --- | --- | --- | --- | --- | --- | --- | --- |
| 53 | 4.2.6 | **图表分析** | 4d | 2020-06-09 | 2020-06-12 |  | 0d | 刘震宇 [25%]; 任翔渝 [25%]; 徐靖垚 [25%]; 张航 [25%] | 64h | 7,300 |
| 54 | 4.2.6.1 | 对比分析功能实现 | 2d | 2020-06-09 | 2020-06-10 | 52 | 0d | 刘震宇 [25%]; 任翔渝 [25%]; 徐靖垚 [25%]; 张航 [25%] | 16h | 1,825 |
| 55 | 4.2.6.2 | 趋势分析功能实现 | 2d | 2020-06-11 | 2020-06-12 | 54 | 0d | 刘震宇 [25%]; 任翔渝 [25%]; 徐靖垚 [25%]; 张航 [25%] | 16h | 1,825 |
| 56 | 4.2.7 | 数据查询与导出功能实现 | 3d | 2020-06-15 | 2020-06-17 | 55 | 0d | 刘震宇 [25%]; 任翔渝 [25%]; 徐靖垚 [25%]; 张航 [25%] | 24h | 2,737.5 |
| 57 | 4.2.8 | 发布通知功能实现 | 3d | 2020-06-18 | 2020-06-22 | 56 | 0d | 刘震宇 [25%]; 任翔渝 [25%]; 徐靖垚 [25%]; 张航 [25%] | 24h | 2,737.5 |
| 58 | 4.2.9 | 浏览通知功能实现 | 2d | 2020-06-23 | 2020-06-24 | 57 | 0d | 刘震宇 [25%]; 任翔渝 [25%]; 徐靖垚 [25%]; 张航 [25%] | 16h | 1,825 |
| 59 | 4.2.10 | **系统管理** | 8d | 2020-06-25 | 2020-07-06 | 58 | 0d | 刘震宇 [25%]; 任翔渝 [25%]; 徐靖垚 [25%]; 张航 [25%] | 128h | 14,600 |
| 60 | 4.2.10.1 | 上报时限功能实现 | 2d | 2020-06-25 | 2020-06-26 | 58 | 0d | 刘震宇 [25%]; 任翔渝 [25%]; 徐靖垚 [25%]; 张航 [25%] | 16h | 1,825 |
| 61 | 4.2.10.2 | 用户管理功能实现 | 2d | 2020-06-29 | 2020-06-30 | 60 | 0d | 刘震宇 [25%]; 任翔渝 [25%]; 徐靖垚 [25%]; 张航 [25%] | 16h | 1,825 |
| 62 | 4.2.10.3 | 角色管理功能实现 | 2d | 2020-07-01 | 2020-07-02 | 61 | 0d | 刘震宇 [25%]; 任翔渝 [25%]; 徐靖垚 [25%]; 张航 [25%] | 16h | 1,825 |
| 63 | 4.2.10.4 | 系统监控功能实现 | 2d | 2020-07-03 | 2020-07-06 | 62 | 0d | 刘震宇 [25%]; 任翔渝 [25%]; 徐靖垚 [25%]; 张航 [25%] | 16h | 1,825 |
| 64 | 4.2.11 | 省功能开发文档编写 | 1d | 2020-07-07 | 2020-07-07 | 63 | 0d | 刘震宇 [25%]; 任翔渝 [25%]; 徐靖垚 [25%]; 张航 [25%] | 8h | 912.5 |
| 65 | 4.2.12 | 省功能开发评审 | 1d? | 2020-07-08 | 2020-07-08 | 64 | 0d | 刘震宇 [25%]; 任翔渝 [25%]; 徐靖垚 [25%]; 张航 [25%]; 饶东来 | 16h | 1,912.5 |
| 66 | 4.3 | 开发阶段评审 | 2d | 2020-07-09 | 2020-07-10 | 48, 65 | 0d | 刘震宇; 任翔渝; 徐靖垚; 张航; 饶东来 | 80h | 9,300 |
| 67 | 5 | **测试阶段** | 21d? | 2020-07-13 | 2020-08-10 |  | 0d | 彭威; 狄旭东 | 616h | 62,000 |
| 68 | 5.1 | 功能测试 | 8d | 2020-07-13 | 2020-07-22 | 4 | 0d | 狄旭东 [50%]; 彭威 [50%] | 64h | 6,400 |
| 69 | 5.2 | 用户界面测试 | 5d | 2020-07-23 | 2020-07-29 | 68 | 0d | 狄旭东 [50%]; 彭威 [50%] | 40h | 4,000 |
| 70 | 5.3 | 性能测试 | 5d | 2020-07-30 | 2020-08-05 | 69 | 0d | 狄旭东 [50%]; 彭威 [50%] | 40h | 4,000 |
| 71 | 5.4 | 压力测试 | 3d | 2020-07-23 | 2020-07-27 | 68 | 0d | 狄旭东 [50%]; 彭威 [50%] | 24h | 2,400 |
| 72 | 5.5 | 故障恢复测试 | 3d | 2020-07-28 | 2020-07-30 | 71 | 0d | 狄旭东 [50%]; 彭威 [50%] | 24h | 2,400 |
| 73 | 5.6 | 安全性测试 | 2d | 2020-07-31 | 2020-08-03 | 72 | 0d | 狄旭东 [50%]; 彭威 [50%] | 16h | 1,600 |
| 74 | 5.7 | 配置测试 | 1d? | 2020-08-04 | 2020-08-04 | 73 | 0d | 狄旭东 [50%]; 彭威 [50%] | 8h | 800 |
| 75 | 5.8 | 安装测试 | 1d? | 2020-08-05 | 2020-08-05 | 74 | 0d | 狄旭东 [50%]; 彭威 [50%] | 8h | 800 |
| 76 | 5.9 | 测试规格说明书编写 | 1d? | 2020-08-06 | 2020-08-06 | 70, 75 | 0d | 狄旭东 [50%]; 彭威 [50%] | 8h | 800 |
| 77 | 5.10 | 测试阶段评审 | 2d | 2020-08-07 | 2020-08-10 | 76 | 0d | 狄旭东; 彭威; 饶东来 | 48h | 5,200 |

| ID | WBS | Task | Duration | Start | Finish | Predecessors | Total slack | Free slack | Resources | Work | Cost |
| --- | --- | --- | --- | --- | --- | --- | --- | --- | --- | --- | --- |
| 78 | 6 | **发布阶段** | 17d? | 2020-08-11 | 2020-09-02 |  | 4d |  | 饶东来 | 272h | 34,000 |
| 79 | 6.1 | 预热发布 | 3d | 2020-08-11 | 2020-08-13 | 5 | 4d | 0d | 饶东来 | 24h | 3,000 |
| 80 | 6.2 | 正式发布 | 7d | 2020-08-14 | 2020-08-24 | 79 | 4d | 0d | 饶东来 | 56h | 7,000 |
| 81 | 6.3 | 应用服务监控 | 3d | 2020-08-25 | 2020-08-27 | 80 | 4d | 0d | 饶东来 | 24h | 3,000 |
| 82 | 6.4 | 编写总结报告 | 1d? | 2020-08-28 | 2020-08-28 | 81 | 4d | 0d | 饶东来 | 8h | 1,000 |
| 83 | 6.5 | 项目收尾总结 | 3d | 2020-08-31 | 2020-09-02 | 82 | 4d | 2d | 饶东来 | 24h | 3,000 |
